# BidSubmision

Schedule from MS Project, 2023-05-03 to 2023-08-02, status date 2023-07-28, costs in $, A marks actual dates.

## Calendars

- Standard: Mon-Fri 08:00-12:00, 13:00-17:00; Sat-Sun off.

## Resources

| Resource | Rate |
| --- | --- |
| MarEx | 18 |
| PrintEx | 15 |
| Ana | 16 |
| BidMan-Tech | 27 |
| Marissa | 20 |
| Alex | 15 |
| Tanya | 20 |
| Desjardine | 15 |
| Clark | 15 |
| BidMan-Fin | 28 |
| Download Fee Charge |  |
| Courier Expenses |  |

## Schedule

| ID | WBS | Task | Type | Duration | Start | Finish | Predecessors | Complete | Baseline start | Baseline finish | Baseline duration | Constraint | Resources | Work | Actual work | Cost | Baseline cost | Actual cost |
| --- | --- | --- | --- | --- | --- | --- | --- | --- | --- | --- | --- | --- | --- | --- | --- | --- | --- | --- |
| 1 | 1 | **Collect RFP** |  | 10d | 2023-05-03 A | 2023-05-16 A |  | 100% | 2023-05-03 | 2023-05-16 | 10d |  |  | 80h | 80h | 11,288 | 11,288 | 11,288 |
| 2 | 1.1 | **Make RFP Available** |  | 5d | 2023-05-03 A | 2023-05-09 A |  | 100% | 2023-05-03 | 2023-05-09 | 5d |  |  | 40h | 40h | 10,648 | 10,648 | 10,648 |
| 3 | 1.1.1 | Download RFP |  | 2d | 2023-05-03 A | 2023-05-04 A |  | 100% | 2023-05-03 | 2023-05-04 | 2d |  | MarEx; Download Fee Charge [0.1%] | 16h | 16h | 10,288 | 10,288 | 10,288 |
| 4 | 1.1.2 | Print RFP |  | 3d | 2023-05-05 A | 2023-05-09 A | 3 | 100% | 2023-05-05 | 2023-05-09 | 3d |  | PrintEx | 24h | 24h | 360 | 360 | 360 |
| 5 | 1.2 | **Separate & Store** |  | 5d | 2023-05-10 A | 2023-05-16 A |  | 100% | 2023-05-10 | 2023-05-16 | 5d |  |  | 40h | 40h | 640 | 640 | 640 |
| 6 | 1.2.1 | Segregate Technical & Financial Segments |  | 4d | 2023-05-10 A | 2023-05-15 A | 4 | 100% | 2023-05-10 | 2023-05-15 | 4d |  | Ana | 32h | 32h | 512 | 512 | 512 |
| 7 | 1.2.2 | Store in Separate Directories |  | 1d | 2023-05-16 A | 2023-05-16 A | 6 | 100% | 2023-05-16 | 2023-05-16 | 1d |  | Ana | 8h | 8h | 128 | 128 | 128 |
| 8 | 2 | **Gather Technical Documentation** |  | 25d | 2023-05-17 A | 2023-06-20 A |  | 100% | 2023-05-17 | 2023-06-20 | 25d |  |  | 200h | 200h | 5,448 | 5,448 | 5,448 |
| 9 | 2.1 | **Prepare Technical Docs** |  | 9d | 2023-05-17 A | 2023-05-29 A |  | 100% | 2023-05-17 | 2023-05-29 | 9d |  |  | 72h | 72h | 1,944 | 1,944 | 1,944 |
| 10 | 2.1.1 | Verify Technical Docs |  | 5d | 2023-05-17 A | 2023-05-23 A | 7 | 100% | 2023-05-17 | 2023-05-23 | 5d |  | BidMan-Tech | 40h | 40h | 1,080 | 1,080 | 1,080 |
| 11 | 2.1.2 | Prepare Advisory Notes |  | 4d | 2023-05-24 A | 2023-05-29 A | 10 | 100% | 2023-05-24 | 2023-05-29 | 4d |  | BidMan-Tech | 32h | 32h | 864 | 864 | 864 |
| 12 | 2.2 | **Manage Technical Collection** |  | 16d | 2023-05-30 A | 2023-06-20 A |  | 100% | 2023-05-30 | 2023-06-20 | 16d |  |  | 128h | 128h | 3,504 | 3,504 | 3,504 |
| 13 | 2.2.1 | Send to Technical Personnel |  | 1d | 2023-05-30 A | 2023-05-30 A | 11 | 100% | 2023-05-30 | 2023-05-30 | 1d |  | BidMan-Fin | 8h | 8h | 224 | 224 | 224 |
| 14 | 2.2.2 | Meetings with Tech Dept |  | 10d | 2023-05-31 A | 2023-06-13 A | 13 | 100% | 2023-05-31 | 2023-06-13 | 10d |  | BidMan-Tech | 80h | 80h | 2,160 | 2,160 | 2,160 |
| 15 | 2.2.3 | Compile & Submit Docs |  | 5d | 2023-06-14 A | 2023-06-20 A | 14 | 100% | 2023-06-14 | 2023-06-20 | 5d |  | BidMan-Fin | 40h | 40h | 1,120 | 1,120 | 1,120 |
| 16 | 3 | **Gather Financial Documentation** |  | 49d | 2023-05-17 A | 2023-07-24 A |  | 100% | 2023-05-17 | 2023-07-24 | 49d |  |  | 256h | 256h | 4,680 | 4,080 | 4,680 |
| 17 | 3.1 | **Prepare Financial Docs** |  | 9d | 2023-05-17 A | 2023-05-29 A |  | 100% | 2023-05-17 | 2023-05-29 | 9d |  |  | 72h | 72h | 1,440 | 1,440 | 1,440 |
| 18 | 3.1.1 | Verify Financial Docs |  | 5d | 2023-05-17 A | 2023-05-23 A | 7 | 100% | 2023-05-17 | 2023-05-23 | 5d |  | Marissa | 40h | 40h | 800 | 800 | 800 |
| 19 | 3.1.2 | Prepare Advisory Notes |  | 4d | 2023-05-24 A | 2023-05-29 A | 18 | 100% | 2023-05-24 | 2023-05-29 | 4d |  | Marissa | 32h | 32h | 640 | 640 | 640 |
| 20 | 3.2 | **Manage Financial Collection** |  | 40d | 2023-05-30 A | 2023-07-24 A |  | 100% | 2023-05-30 | 2023-07-24 | 40d |  |  | 184h | 184h | 3,240 | 2,640 | 3,240 |
| 21 | 3.2.1 | Send to Financial Personnel |  | 6d | 2023-05-30 A | 2023-06-06 A | 19 | 100% | 2023-05-30 | 2023-05-30 | 1d |  | Alex | 48h | 48h | 720 | 120 | 720 |
| 22 | 3.2.2 | Meetings with Fin Dept |  | 12d | 2023-05-31 A | 2023-06-15 A | 21 | 100% | 2023-05-31 | 2023-06-15 | 12d |  | Marissa | 96h | 96h | 1,920 | 1,920 | 1,920 |
| 23 | 3.2.3 | Compile & Submit Docs |  | 5d | 2023-07-18 A | 2023-07-24 A | 22 | 100% | 2023-07-18 | 2023-07-24 | 5d | finish no earlier than 2023-07-24 | Alex | 40h | 40h | 600 | 600 | 600 |
| 24 | 4 | Review Readiness | milestone, manual | 0d | 2023-05-03 | 2023-05-03 |  |  | 2023-07-22 | 2023-07-22 | 0d |  |  |  |  |  |  |  |

Notes:
- 3: Download Fee Charge (Cost) - $10,000.00

| ID | WBS | Task | Duration | Start | Finish | Predecessors | Complete | Remaining | Baseline start | Baseline finish | Baseline duration | Total slack | Free slack | Resources | Work | Actual work | Cost | Baseline cost | Actual cost |
| --- | --- | --- | --- | --- | --- | --- | --- | --- | --- | --- | --- | --- | --- | --- | --- | --- | --- | --- | --- |
| 25 | 5 | **Ready and Send** | 5d | 2023-07-27 A | 2023-08-02 |  | 9% | 4.56d | 2023-07-27 | 2023-08-02 | 5d |  |  |  | 64h | 5.6h | 1,854 | 1,404 | 858 |
| 26 | 5.1 | **Ready Documents** | 5d | 2023-07-27 A | 2023-08-02 |  | 10% | 4.5d | 2023-07-27 | 2023-08-02 | 5d | 0d |  |  | 48h | 4.8h | 864 | 864 | 96 |
| 27 | 5.1.1 | Bind Documents | 3d | 2023-07-27 A | 2023-07-31 |  | 20% | 2.4d | 2023-07-27 | 2023-07-31 | 3d | 0d |  | Tanya | 24h | 4.8h | 480 | 480 | 96 |
| 28 | 5.1.2 | Prepare separate packets | 2d | 2023-08-01 | 2023-08-02 | 27 |  |  | 2023-08-01 | 2023-08-02 | 2d | 0d |  | Ana | 16h |  | 256 | 256 |  |
| 29 | 5.1.3 | Prepare final package | 1d | 2023-07-27 | 2023-07-27 |  |  |  | 2023-07-27 | 2023-07-27 | 1d | 0.1d | 0d | Ana | 8h |  | 128 | 128 |  |
| 30 | 5.2 | **Courier Document** | 2d | 2023-07-28 A | 2023-07-31 |  | 5% | 1.9d | 2023-07-28 | 2023-07-31 | 2d | 2d |  |  | 16h | 0.8h | 990 | 540 | 762 |
| 31 | 5.2.1 | Courier to Prospect | 1d | 2023-07-28 A | 2023-07-28 | 29 | 10% | 0.9d | 2023-07-28 | 2023-07-28 | 1d | 2d | 0d | Desjardine; Courier Expenses [0.1%] | 8h | 0.8h | 870 | 420 | 762 |
| 32 | 5.2.2 | Store Receipt | 1d | 2023-07-31 | 2023-07-31 | 31 |  |  | 2023-07-31 | 2023-07-31 | 1d | 2d |  | Clark | 8h |  | 120 | 120 |  |

Notes:
- 31: Courier Expenses (Cost) $300.00
